# Simple Project Plan

Schedule from MS Project, 2020-08-17 to 2020-09-05, A marks actual dates.

## Calendars

- Standard: Mon-Fri 08:00-12:00, 13:00-17:00; Sat-Sun off. Exceptions (off unless hours are given): 2020-08-22 08:00-12:00, 13:00-17:00, 2020-08-29 08:00-12:00, 13:00-17:00, 2020-09-05 08:00-12:00, 13:00-17:00.

## Resources

| Resource | Notes |
| --- | --- |
| 解俊杰 | 平台软件工程师 |
| 郑棉涛 | 平台软件工程师 |
| 颜仙龙 | 软件工程师 |

## Schedule

| ID | WBS | Task | Duration | Start | Finish | Predecessors | Remaining | Total slack | Free slack | Constraint | Resources | Work |
| --- | --- | --- | --- | --- | --- | --- | --- | --- | --- | --- | --- | --- |
| 1 | 1 | **颜仙龙** | 18d | 2020-08-17 A | 2020-09-05 |  | 18d | 0d |  |  |  | 144h |
| 2 | 1.1 | 耳温枪编码，功能确认 | 1d | 2020-08-17 | 2020-08-17 |  |  | 0d |  | start no earlier than 2020-08-17 | 颜仙龙 | 8h |
| 3 | 1.2 | 耳温枪测试代码编码及环境搭建 | 3d | 2020-08-18 | 2020-08-20 | 2 |  | 0d |  | start no earlier than 2020-08-18 | 颜仙龙 | 24h |
| 4 | 1.3 | APP、解析器、终端协议 根据安全重新编写 | 2d | 2020-08-21 | 2020-08-22 | 3 |  | 0d |  | finish no earlier than 2020-08-22 | 颜仙龙 | 16h |
| 5 | 1.4 | APP 解析器 终端 三端根据安全协议重新编码实现 | 4d | 2020-08-24 A | 2020-08-27 | 4 | 4d | 2d | 0d | finish no earlier than 2020-08-29 | 颜仙龙 | 32h |
| 6 | 1.5 | 解析器 对云接口调试测试 | 3d | 2020-08-28 | 2020-08-31 | 5 |  | 0d |  |  | 颜仙龙 | 24h |
| 7 | 1.6 | 阿玛逊云--信恳云--解析器--信恳终端（智能开关）全流程调试测试 | 2d | 2020-09-01 | 2020-09-02 | 6 |  | 0d |  | start no earlier than 2020-09-01 | 颜仙龙 | 16h |
| 8 | 1.7 | APP 、解析器、终端 三端bug修复，及优化性能 | 3d | 2020-09-03 | 2020-09-05 | 7 |  | 0d |  | finish no earlier than 2020-09-05 | 颜仙龙 | 24h |
| 9 | 2 | **解俊杰** | 17d | 2020-08-17 | 2020-09-04 |  |  | 1d |  |  |  | 136h |
| 10 | 2.1 | 亚马逊云了解 | 1d | 2020-08-17 | 2020-08-17 |  |  | 4d | 0d | start no earlier than 2020-08-17 | 解俊杰 | 8h |
| 11 | 2.2 | 亚马逊云对接 信恳云编码 | 4d | 2020-08-18 | 2020-08-21 | 10 |  | 1d | 0d |  | 解俊杰 | 32h |
| 12 | 2.3 | 亚马逊云对接 信恳云 调试 | 3d | 2020-08-22 | 2020-08-25 | 11 |  | 1d | 0d |  | 解俊杰 | 24h |
| 13 | 2.4 | 信恳云 对接解析器 编码 | 3d | 2020-08-26 | 2020-08-28 | 12 |  | 1d | 0d |  | 解俊杰 | 24h |
| 14 | 2.5 | 信恳云 对接解析器 调试(控制到终端) | 3d | 2020-08-29 | 2020-09-01 | 13 |  | 1d | 0d |  | 解俊杰 | 24h |
| 15 | 2.6 | 部署前面bug修改，及性能优化 | 3d | 2020-09-02 | 2020-09-04 | 14 |  | 1d |  | finish no earlier than 2020-09-04 | 解俊杰 | 24h |
| 16 | 3 | **郑锦涛** | 17d | 2020-08-17 | 2020-09-04 |  |  | 1d |  |  |  | 136h |
| 17 | 3.1 | 信恳云安全控制规划 | 2d | 2020-08-17 | 2020-08-18 |  |  | 4d | 0d | start no earlier than 2020-08-17 | 郑棉涛 | 16h |
| 18 | 3.2 | 信恳云安全控制编码实现 | 6d | 2020-08-19 | 2020-08-25 | 17 |  | 1d | 0d | start no earlier than 2020-08-18 | 郑棉涛 | 48h |
| 19 | 3.3 | 信恳云安全测试，修复 | 3d | 2020-08-26 | 2020-08-28 | 18 |  | 1d | 0d | start no earlier than 2020-07-16 | 郑棉涛 | 24h |
| 20 | 3.4 | 信恳云错误跳转，压力测试 | 3d | 2020-08-29 | 2020-09-01 | 19 |  | 1d | 0d | start no earlier than 2020-07-17 | 郑棉涛 | 24h |
| 21 | 3.5 | 其他页面编写，修改 | 3d | 2020-09-02 | 2020-09-04 | 20 |  | 1d |  | finish no earlier than 2020-07-18 | 郑棉涛 | 24h |

Notes:
- 1: 这是摘要任务。使用摘要任务以帮助您在节中组织项目。
- 4: 这是里程碑任务。将任务工期设置为 0d 以标记项目中的事件。
- 17: 在其旁边带有图钉的任务为手动计划任务。当您不想让 Project 移动任务时请使用它们。如果您尚未获得所有信息，您也可以在工期、开始和完成字段输入任意文本或将其保留为空。
